# GANTT

How a schedule from MS Project changed from version to version. A marks actual dates.

## Version 1 (saved 2021-05-10)

Note of the change: 09/05/2021 Subiendo a GitHub

| ID | WBS | Task | Duration | Start | Finish | Predecessors | Complete | Total float |
| --- | --- | --- | --- | --- | --- | --- | --- | --- |
| 1 | 1 | **Diplomas y Certificados v1** | 29d | 2021-04-26 A | 2021-06-03 |  | 24% |  |
| 2 | 1.1 | **Panel de Usuario** | 8d | 2021-04-26 A | 2021-05-05 |  | 89% | 0d |
| 3 |  | Acceso de Usuario | 1d | 2021-04-26 A | 2021-04-26 A |  | 100% |  |
| 4 |  | Home | 1d | 2021-04-27 A | 2021-04-27 A | 3 | 100% |  |
| 5 |  | Mis cursos | 2d | 2021-04-28 A | 2021-04-29 A | 4 | 100% |  |
| 6 |  | Ver Certificado | 3d | 2021-04-30 A | 2021-05-04 A | 5 | 100% |  |
| 7 |  | Perfil | 1d | 2021-05-05 A | 2021-05-05 | 6 | 10% | 0d |
| 8 | 1.2 | **Panel de Administrador** | 14d | 2021-05-06 | 2021-05-25 |  |  | 0d |
| 9 |  | Acceso de Administrador | 1d | 2021-05-06 | 2021-05-06 | 7 |  | 0d |
| 10 |  | Home | 1d | 2021-05-07 | 2021-05-07 | 9 |  | 0d |
| 11 |  | Mantenimiento de Cursos | 2d | 2021-05-10 | 2021-05-11 | 10 |  | 0d |
| 12 |  | Mantenimiento de Categorias | 2d | 2021-05-12 | 2021-05-13 | 11 |  | 0d |
| 13 |  | Mantenimiento de Instructores | 2d | 2021-05-14 | 2021-05-17 | 12 |  | 0d |
| 14 |  | Mantenimiento de Usuarios | 2d | 2021-05-18 | 2021-05-19 | 13 |  | 0d |
| 15 |  | Detalle de Certificados | 3d | 2021-05-20 | 2021-05-24 | 14 |  | 0d |
| 16 |  | Perfil | 1d | 2021-05-25 | 2021-05-25 | 15 |  | 0d |
| 17 | 1.3 | **Pruebas** | 7d | 2021-05-26 | 2021-06-03 |  |  | 0d |
| 18 |  | Pruebas Con el Cliente | 5d | 2021-05-26 | 2021-06-01 | 16 |  | 0d |
| 19 |  | Correcion y Observaciones | 2d | 2021-06-02 | 2021-06-03 | 18 |  | 0d |
| 20 |  | Diplomas y Certificados v2 | 1d? | 2021-04-26 | 2021-04-26 |  |  |  |

## Version 2 (saved 2021-07-03)

Note of the change: 03/07/2021 Mantenimiento Curso

Last finish stays 2021-06-03. Complete tasks 4 → 5.

Changed:

| ID | Task | Finish | Complete | Total float |
| --- | --- | --- | --- | --- |
| 1 | **Diplomas y Certificados v1** |  | 24% → 28% |  |
| 2 | **Panel de Usuario** | 2021-05-05 A | 89% → 100% | 0d → none |
| 7 | Perfil | 2021-05-05 A | 10% → 100% | 0d → none |

## Version 3 (saved 2021-08-05)

Note of the change: 15/08/2021 Mantenimiento Curso

Last finish stays 2021-06-03. Complete tasks 5 → 8.

Changed:

| ID | Task | Start | Finish | Complete | Total float |
| --- | --- | --- | --- | --- | --- |
| 1 | **Diplomas y Certificados v1** |  |  | 28% → 41% |  |
| 8 | **Panel de Administrador** | 2021-05-06 A |  | 0% → 29% | 0d → 7d |
| 9 | Acceso de Administrador | 2021-05-06 A | 2021-05-06 A | 0% → 100% | 0d → none |
| 11 | Mantenimiento de Cursos | 2021-05-10 A | 2021-05-11 A | 0% → 100% | 0d → none |
| 16 | Perfil | 2021-05-25 A | 2021-05-25 A | 0% → 100% | 0d → none |

## Version 4 (saved 2021-08-18)

Note of the change: 18/08/2021 Mantenimiento de Proveedores

Last finish stays 2021-06-03. Complete tasks 8 → 10.

Changed:

| ID | Task | Start | Finish | Complete | Total float |
| --- | --- | --- | --- | --- | --- |
| 1 | **Diplomas y Certificados v1** |  |  | 41% → 57% |  |
| 8 | **Panel de Administrador** |  |  | 29% → 61% |  |
| 10 | Home | 2021-05-07 A |  | 0% → 50% |  |
| 12 | Mantenimiento de Categorias | 2021-05-12 A | 2021-05-13 A | 0% → 100% | 8d → none |
| 13 | Mantenimiento de Instructores | 2021-05-14 A | 2021-05-17 A | 0% → 100% | 8d → none |

## Version 5 (saved 2021-08-19)

Note of the change: 21/08/2021 Mantenimiento de Usuario 2

Last finish stays 2021-06-03. Complete tasks 10 → 11.

Changed:

| ID | Task | Start | Finish | Complete | Total float |
| --- | --- | --- | --- | --- | --- |
| 1 | **Diplomas y Certificados v1** |  |  | 57% → 64% |  |
| 8 | **Panel de Administrador** |  |  | 61% → 75% |  |
| 14 | Mantenimiento de Usuarios | 2021-05-18 A | 2021-05-19 A | 0% → 100% | 8d → none |

## Version 6 (saved 2021-08-22)

Note of the change: 09/09/2021 V2

Last finish stays 2021-06-03. Complete tasks 11 → 15.

Changed:

| ID | Task | Start | Finish | Complete | Total float |
| --- | --- | --- | --- | --- | --- |
| 1 | **Diplomas y Certificados v1** |  | 2021-06-03 A | 64% → 100% |  |
| 8 | **Panel de Administrador** |  | 2021-05-25 A | 75% → 100% | 7d → none |
| 10 | Home |  | 2021-05-07 A | 50% → 100% | 19d → none |
| 15 | Detalle de Certificados | 2021-05-20 A | 2021-05-24 A | 0% → 100% | 8d → none |
| 17 | **Pruebas** | 2021-05-26 A | 2021-06-03 A | 0% → 100% | 0d → none |
| 18 | Pruebas Con el Cliente | 2021-05-26 A | 2021-06-01 A | 0% → 100% | 0d → none |
| 19 | Correcion y Observaciones | 2021-06-02 A | 2021-06-03 A | 0% → 100% | 0d → none |
